# diagrama de gantt Fresh Style

How a schedule from MS Project changed from version to version. A marks actual dates.

## Version 1 (saved 2026-09-14, file diagrama de gantt Fresh Style (2).mpp)

Note of the change: Merge pull request #94 from g5vyy8gbm6-design/Andres

| ID | WBS | Task | Duration | Start | Finish | Predecessors | Complete | Total float | Constraint |
| --- | --- | --- | --- | --- | --- | --- | --- | --- | --- |
| 1 | 1 | **1. Inicio del proyecto** | 10d | 2026-04-22 A | 2026-05-05 A |  | 100% |  |  |
| 2 |  | Recolección de información | 1w | 2026-04-22 A | 2026-04-28 A |  | 100% |  |  |
| 3 |  | Entrevista a empresa | 1d | 2026-04-30 A | 2026-04-30 A | 2 | 100% |  |  |
| 4 |  | Encuesta a clientes | 3d | 2026-05-01 A | 2026-05-05 A | 2 | 100% |  |  |
| 5 | 2 | **2. Análisis de requisitos** | 10d | 2026-05-06 A | 2026-05-19 A |  | 100% |  |  |
| 6 |  | Análisis de necesidades | 1w | 2026-05-06 A | 2026-05-12 A | 4 | 100% |  |  |
| 7 |  | Identificación de usuarios | 1w | 2026-05-06 A | 2026-05-12 A | 4 | 100% |  |  |
| 8 |  | Requisitos funcionales | 1w | 2026-05-13 A | 2026-05-19 A | 7 | 100% |  |  |
| 9 |  | Requisitos no funcionales | 1w | 2026-05-13 A | 2026-05-19 A | 7 | 100% |  |  |
| 10 | 3 | **3. Elaboración del IEEE 830** | 6d | 2026-05-20 A | 2026-05-27 A |  | 100% |  |  |
| 11 |  | Introducción y descripción general | 48h | 2026-05-20 A | 2026-05-27 A | 9 | 100% |  |  |
| 12 |  | Requisitos funcionales | 5d | 2026-05-20 A | 2026-05-26 A | 9 | 100% |  |  |
| 13 |  | Requisitos no funcionales | 3d | 2026-05-20 A | 2026-05-22 A | 9 | 100% |  |  |
| 14 |  | Hito: IEEE 830 terminado | 1w | 2026-05-20 A | 2026-05-26 A | 9 | 100% |  |  |
| 15 | 4 | **4. Modelado del sistema** | 5d | 2026-05-28 A | 2026-06-03 A |  | 100% |  |  |
| 16 |  | Diagrama BPMN | 1w | 2026-05-28 A | 2026-06-03 A | 14 | 100% |  |  |
| 17 | 5 | **Uml** | 5d | 2026-06-05 A | 2026-06-11 A |  | 100% |  |  |
| 18 |  | Diagrama de casos de uso | 1w | 2026-06-05 A | 2026-06-11 A | 16 | 100% |  |  |
| 19 |  | Diagrama de clases | 1w | 2026-06-05 A | 2026-06-11 A | 16 | 100% |  |  |
| 20 |  | Diagrama de despliegue | 1w | 2026-06-05 A | 2026-06-11 A | 16 | 100% |  |  |
| 21 | 6 | **5. Diseño del sistema** | 20d | 2026-06-11 A | 2026-07-08 A |  | 100% |  |  |
| 22 |  | Diseño de interfaces | 3w | 2026-06-11 A | 2026-07-01 A | 20 | 100% |  |  |
| 23 |  | Diseño de base de datos | 4w | 2026-06-11 A | 2026-07-08 A | 20 | 100% |  |  |
| 24 |  | Diseño de arquitectura | 3w | 2026-06-11 A | 2026-07-01 A | 20 | 100% |  |  |
| 25 | 7 | **6. Desarrollo** | 10d | 2026-07-09 A | 2026-07-22 A |  | 100% |  |  |
| 26 |  | Configuración del entorno | 1w | 2026-07-09 A | 2026-07-15 A | 24 | 100% |  |  |
| 27 |  | Desarrollo de usuarios y perfiles | 1w | 2026-07-09 A | 2026-07-15 A | 24 | 100% |  |  |
| 28 |  | Desarrollo de establecimientos | 1w | 2026-07-09 A | 2026-07-15 A | 24 | 100% |  | start no earlier than 2026-04-22 |
| 29 |  | Desarrollo de reservas | 1w | 2026-07-09 A | 2026-07-15 A | 24 | 100% |  | start no earlier than 2026-07-09 |
| 30 |  | Integración de módulos | 2w | 2026-07-09 A | 2026-07-22 A | 24 | 100% |  | start no earlier than 2026-07-09 |
| 31 | 8 | **7. Pruebas** | 5d | 2026-07-23 | 2026-07-29 |  |  | 0d |  |
| 32 |  | Pruebas funcionales | 1w | 2026-07-23 | 2026-07-29 | 30 |  | 35d | start no earlier than 2026-07-23 |
| 33 |  | Pruebas de seguridad | 1w | 2026-07-23 | 2026-07-29 | 30 |  | 35d | start no earlier than 2026-07-23 |
| 34 |  | Pruebas de rendimiento | 1w | 2026-07-23 | 2026-07-29 | 30 |  | 35d | start no earlier than 2026-07-23 |
| 35 |  | Pruebas de compatibilidad y responsividad | 1w | 2026-07-23 | 2026-07-29 | 30 |  | 0d | start no earlier than 2026-07-23 |
| 36 |  | 8. Corrección de errores | 3w | 2026-07-30 | 2026-08-19 | 35 |  | 0d |  |
| 37 | 10 | **9. Implementación** | 5d | 2026-08-20 | 2026-08-26 |  |  | 0d |  |
| 38 |  | Configuración del servidor | 1w | 2026-08-20 | 2026-08-26 | 36 |  | 15d | start no earlier than 2026-08-20 |
| 39 |  | Publicación del aplicativo | 1w | 2026-08-20 | 2026-08-26 | 36 |  | 0d | start no earlier than 2026-08-20 |
| 40 | 11 | **10. Capacitación y entrega** | 10d | 2026-08-27 | 2026-09-09 |  |  | 0d |  |
| 41 |  | Capacitación de usuarios | 2w | 2026-08-27 | 2026-09-09 | 39 |  | 5d | start no earlier than 2026-08-26 |
| 42 |  | Entrega final | 2w | 2026-08-27 | 2026-09-09 | 39 |  | 0d | start no earlier than 2026-08-26 |
| 43 |  | 11. Soporte y mantenimiento | 1w | 2026-09-10 | 2026-09-16 | 42 |  | 0d |  |

## Version 2 (saved 2026-09-23, file diagrama de gantt Fresh Style finalizado.mpp)

Note of the change: Merge pull request #99 from g5vyy8gbm6-design/master

Last finish stays 2026-09-16. Complete tasks 23 → 22.

Changed:

| ID | Task | Start | Finish | Duration | Complete | Total float | Other |
| --- | --- | --- | --- | --- | --- | --- | --- |
| 2 | Recolección de información |  |  |  |  |  | resources Desarrollador → Analista; Líder de proyecto |
| 3 | Entrevista a empresa |  |  | 1d → 0d |  |  | resources Diseñador UI/UX; TESTER → Líder de proyecto |
| 4 | Encuesta a clientes |  |  |  |  |  | resources Analista → Analista; Líder de proyecto |
| 6 | Análisis de necesidades |  |  |  |  |  | resources Desarrollador → Analista; Líder de proyecto |
| 7 | Identificación de usuarios |  |  |  |  |  | resources Diseñador UI/UX → Líder de proyecto |
| 8 | Requisitos funcionales |  |  |  |  |  | resources TESTER → Analista |
| 11 | Introducción y descripción general |  |  |  |  |  | resources Diseñador UI/UX → Líder de proyecto |
| 12 | Requisitos funcionales |  |  |  |  |  | resources TESTER → Analista |
| 14 | Hito: IEEE 830 terminado |  |  |  |  |  | resources Desarrollador → Analista; Líder de proyecto |
| 15 | **4. Modelado del sistema** | 2026-05-28 A → 2026-05-27 (-1d) | 2026-06-03 A → 2026-06-02 (-1d) |  | 100% → 0% | none → 76d |  |
| 16 | Diagrama BPMN | 2026-05-28 A → 2026-05-27 (-1d) | 2026-06-03 A → 2026-06-02 (-1d) |  | 100% → 0% | none → 76d | resources Analista; Desarrollador; Diseñador UI/UX; TESTER → Desarrollador; Desarrollador senior |
| 18 | Diagrama de casos de uso |  |  |  |  |  | resources Desarrollador → Desarrollador; Desarrollador senior |
| 19 | Diagrama de clases |  |  |  |  |  | resources Analista → Desarrollador; Desarrollador senior |
| 20 | Diagrama de despliegue |  |  |  |  |  | resources Diseñador UI/UX; TESTER → Desarrollador; Líder de proyecto |
| 22 | Diseño de interfaces |  |  |  |  |  | resources Desarrollador → Diseñador UI/UX |
| 23 | Diseño de base de datos |  |  |  |  |  | resources TESTER; Diseñador UI/UX → Desarrollador |
| 24 | Diseño de arquitectura |  |  |  |  |  | resources Analista → Desarrollador |
| 26 | Configuración del entorno |  | 2026-07-15 A → 2026-07-09 A (-6d) | 1w → 0w |  |  | resources TESTER → Desarrollador; Desarrollador senior |
| 27 | Desarrollo de usuarios y perfiles |  |  |  |  |  | resources Desarrollador → Desarrollador; Líder de proyecto |
| 28 | Desarrollo de establecimientos |  |  |  |  |  | resources Diseñador UI/UX → Desarrollador; Líder de proyecto |
| 29 | Desarrollo de reservas |  |  |  |  |  | resources Analista → Desarrollador; Líder de proyecto |
| 30 | Integración de módulos |  |  |  |  |  | resources Diseñador UI/UX → Desarrollador; Desarrollador senior |
| 32 | Pruebas funcionales |  |  |  |  |  | resources Analista; Desarrollador; Diseñador UI/UX; TESTER → TESTER |
| 33 | Pruebas de seguridad |  |  |  |  |  | resources Analista; Desarrollador; Diseñador UI/UX; TESTER → TESTER |
| 34 | Pruebas de rendimiento |  |  |  |  |  | resources Analista; Desarrollador; Diseñador UI/UX; TESTER → TESTER |
| 35 | Pruebas de compatibilidad y responsividad |  |  |  |  |  | resources Analista; Desarrollador; Diseñador UI/UX; TESTER → TESTER |
| 36 | 8. Corrección de errores |  |  |  |  |  | resources Analista; Desarrollador; Diseñador UI/UX; TESTER → Desarrollador; Desarrollador senior |
| 38 | Configuración del servidor |  |  |  |  |  | resources Desarrollador; TESTER → Desarrollador; Servidores (app nube) |
| 39 | Publicación del aplicativo |  |  |  |  |  | resources Analista; Diseñador UI/UX → Líder de proyecto; Dominio web [0.1%] |
| 41 | Capacitación de usuarios |  |  |  |  |  | resources Desarrollador; TESTER → Líder de proyecto |
| 42 | Entrega final |  |  |  |  |  | resources Analista; Desarrollador; Diseñador UI/UX; TESTER → Desarrollador; Diseñador UI/UX; TESTER; Analista; Líder de proyecto |
| 43 | 11. Soporte y mantenimiento |  |  |  |  |  | resources Analista; Desarrollador; Diseñador UI/UX; TESTER → Desarrollador |
